# National Health Campaign

Schedule from MS Project, 2024-02-29 to 2024-04-23, costs in €, A marks actual dates.
Research Programme
ABC Research Ltd.

## Calendars

- Standard: Mon-Fri 08:00-12:00, 13:00-17:00; Sat-Sun off.

## Resources

| Resource | Group | Rate |
| --- | --- | --- |
| Joanna Kelly | Management | 19.23 |
| Riona Carr | Executive | 6.25 |
| Mary Breen | Management | 19.23 |
| Tom Joyce | Office Staff | 6.88 |
| Conference Room | Facilities |  |
| Junior Staff | Office Staff | 3.75 |
| Printing | External |  |

## Schedule

| ID | WBS | Task | Type | Duration | Start | Finish | Predecessors | Complete | Actual start | Actual finish | Baseline start | Baseline finish | Baseline duration | Baseline 1 start | Baseline 1 finish | Resources | Work | Actual work | Cost | Actual cost |
| --- | --- | --- | --- | --- | --- | --- | --- | --- | --- | --- | --- | --- | --- | --- | --- | --- | --- | --- | --- | --- |
| 1 | 1 | **National Health Campaign** |  | 39d? | 2024-02-29 A | 2024-04-23 |  | 100% |  | 2024-04-05 |  |  |  |  |  |  | 456h | 456h | 4,364.42 | 4,364.42 |
| 2 | 1.1 | **Planning** |  | 13d | 2024-02-29 A | 2024-03-18 A |  | 100% |  |  |  |  |  |  |  |  | 96h | 96h | 537.69 | 537.69 |
| 3 | 1.1.1 | Design Questionnaire | manual | 2d | 2024-02-29 A | 2024-03-01 A |  | 100% |  |  | 2024-02-29 | 2024-03-01 | 2d | 2024-02-29 | 2024-03-01 | Joanna Kelly | 16h | 16h | 307.69 | 307.69 |
| 4 | 1.1.2 | Type Questionnaire | manual | 1d | 2024-03-04 A | 2024-03-04 A | 3 | 100% |  |  | 2024-02-29 | 2024-02-29 | 1d | 2024-02-29 | 2024-02-29 | Junior Staff | 8h | 8h | 30 | 30 |
| 5 | 1.1.3 | Print Questionnaire | manual | 1w | 2024-03-05 A | 2024-03-11 A | 4 | 100% |  |  | 2024-02-29 | 2024-03-06 | 1w | 2024-02-29 | 2024-03-06 | Printing | 40h | 40h |  |  |
| 6 | 1.1.4 | Invite Interviewers to Briefing meeting | manual | 4d | 2024-03-12 A | 2024-03-15 A | 5 | 100% |  |  | 2024-02-29 | 2024-03-04 | 3d | 2024-02-29 | 2024-03-04 | Riona Carr | 32h | 32h | 200 | 200 |
| 7 | 1.1.5 | Survey Planning Complete | milestone, manual | 0d | 2024-03-18 A | 2024-03-18 A | 6 | 100% |  |  | 2024-02-29 | 2024-02-29 | 0d | 2024-02-29 | 2024-02-29 |  |  |  |  |  |
| 8 | 1.2 | **Briefing Setup** |  | 10d | 2024-02-29 A | 2024-03-13 A |  | 100% |  |  |  |  |  |  |  |  | 84h | 84h | 472.5 | 472.5 |
| 9 | 1.2.1 | Book Conference Room for Briefing meeting | manual | 4h | 2024-02-29 A | 2024-02-29 A |  | 100% |  |  | 2024-02-29 | 2024-02-29 | 4h | 2024-02-29 | 2024-02-29 | Tom Joyce | 4h | 4h | 27.5 | 27.5 |
| 10 | 1.2.2 | Contact Invterviewing Loctions | manual | 2d | 2024-02-29 A | 2024-03-04 A | 9 | 100% |  |  | 2024-02-29 | 2024-03-01 | 2d | 2024-02-29 | 2024-03-01 | Tom Joyce | 16h | 16h | 110 | 110 |
| 11 | 1.2.3 | Prepare Rosters | manual | 4d | 2024-03-04 A | 2024-03-08 A | 10 | 100% |  |  | 2024-02-29 | 2024-03-05 | 4d | 2024-02-29 | 2024-03-05 | Tom Joyce | 32h | 32h | 220 | 220 |
| 12 | 1.2.4 | Prepare packs for each Interviewer | manual | 3d | 2024-03-08 A | 2024-03-13 A | 11 | 100% |  |  | 2024-02-29 | 2024-03-04 | 3d | 2024-02-29 | 2024-03-04 | Junior Staff | 24h | 24h | 90 | 90 |
| 13 | 1.2.5 | Briefing Meeting with Interviewers |  | 4h | 2024-03-13 A | 2024-03-13 A | 12 | 100% |  |  | 2024-02-29 | 2024-02-29 | 4h | 2024-02-29 | 2024-02-29 | Conference Room; Riona Carr | 8h | 8h | 25 | 25 |
| 14 | 1.2.6 | Interviewers Briefing Complete | milestone | 0d | 2024-03-13 A | 2024-03-13 A | 13 | 100% |  |  | 2024-02-29 | 2024-02-29 | 0d | 2024-02-29 | 2024-02-29 |  |  |  |  |  |
| 15 | 1.3 | **Data Processing** |  | 17d | 2024-03-14 A | 2024-04-05 A |  | 100% |  |  |  |  |  |  |  |  | 148h | 148h | 892.69 | 892.69 |
| 16 | 1.3.1 | Prepare Book in Forms |  | 2d | 2024-03-14 A | 2024-03-15 A |  | 100% |  |  | 2024-02-29 | 2024-03-01 | 2d | 2024-02-29 | 2024-03-01 | Riona Carr | 16h | 16h | 100 | 100 |
| 17 | 1.3.2 | Check Questionnaires |  | 2d | 2024-03-18 A | 2024-03-19 A | 16 | 100% |  |  | 2024-02-29 | 2024-03-01 | 2d | 2024-02-29 | 2024-03-01 | Junior Staff | 16h | 16h | 60 | 60 |
| 18 | 1.3.3 | Code Questionnaires |  | 1.5w | 2024-03-20 A | 2024-03-29 A | 17 | 100% |  |  | 2024-02-29 | 2024-03-11 | 1.5w | 2024-02-29 | 2024-03-11 | Junior Staff | 60h | 60h | 225 | 225 |
| 19 | 1.3.4 | Input Data in Computer |  | 3d | 2024-03-29 A | 2024-04-03 A | 18 | 100% |  |  | 2024-02-29 | 2024-03-04 | 3d | 2024-02-29 | 2024-03-04 | Junior Staff | 24h | 24h | 90 | 90 |
| 20 | 1.3.5 | Analyse the Data |  | 2d | 2024-04-03 A | 2024-04-05 A | 19 | 100% |  |  | 2024-02-29 | 2024-03-01 | 2d | 2024-02-29 | 2024-03-01 | Joanna Kelly; Tom Joyce | 32h | 32h | 417.69 | 417.69 |
| 21 | 1.3.6 | Data Processing Complete | milestone | 0d | 2024-04-05 A | 2024-04-05 A | 20 | 100% |  |  | 2024-02-29 | 2024-02-29 | 0d | 2024-02-29 | 2024-02-29 |  |  |  |  |  |
| 22 | 1.4 | **Interpretation** |  | 9.25d | 2024-03-23 | 2024-04-04 |  | 100% | 2024-03-25 | 2024-04-03 |  |  |  |  |  |  | 128h | 128h | 2,461.54 | 2,461.54 |
| 23 | 1.4.1 | Prepare Presentation |  | 3d | 2024-03-25 A | 2024-03-27 A |  | 100% |  |  | 2024-02-29 | 2024-03-04 | 3d | 2024-02-29 | 2024-03-04 | Mary Breen; Joanna Kelly | 48h | 48h | 923.08 | 923.08 |
| 24 | 1.4.2 | Prepare Reseatch Report |  | 1w | 2024-03-28 A | 2024-04-03 A | 23 | 100% |  |  |  |  |  |  |  | Joanna Kelly; Mary Breen | 80h | 80h | 1,538.46 | 1,538.46 |
| 25 | 1.4.3 | Project Complete | milestone | 0d | 2024-04-03 A | 2024-04-03 A | 24 | 100% |  |  |  |  |  |  |  |  |  |  |  |  |
